# Stalker In The Middle

Schedule from MS Project, 2013-03-07 to 2013-07-05, A marks actual dates.

## Calendars

- Standard: Mon-Fri 08:00-12:00, 13:00-17:00; Sat-Sun off.

## Resources

| Resource |
| --- |
| Alban |
| Brice |
| Christie |
| Nicolas |
| inquel |
| bunlon |
| nchatelain |
| Eric.LALITTE |
| valery.farcy |

## Schedule

| ID | WBS | Task | Type | Duration | Start | Finish | Predecessors | Complete | Remaining | Total slack | Free slack | Constraint | Deadline | Resources | Work | Actual work |
| --- | --- | --- | --- | --- | --- | --- | --- | --- | --- | --- | --- | --- | --- | --- | --- | --- |
| 1 | 1 | Stalker In The Middle | milestone | 1d | 2013-07-04 | 2013-07-05 |  |  |  | -10d | 0d | finish no earlier than 2013-07-05 | 2013-06-21 | Alban; Brice; Christie; Nicolas | 32h |  |
| 2 | 2 | **Documents avant-projet** |  | 27d? | 2013-03-07 | 2013-04-15 |  |  |  | 59.62d |  |  |  | Alban; Brice; Christie; Nicolas | 264h |  |
| 3 | 2.1 | **Rédaction des documents avant-projet** |  | 1d? | 2013-03-07 | 2013-03-08 |  |  |  | 85.62d | 21.62d |  |  | Alban; Brice; Christie; Nicolas | 112h |  |
| 4 | 2.1.1 | Charte de projet |  | 0.33d? | 2013-03-07 | 2013-03-08 |  | 100% |  | 85.62d |  |  |  | Alban; Brice; Christie | 24h |  |
| 5 | 2.1.2 | Spécifications |  | 0.5d? | 2013-03-07 | 2013-03-08 |  | 100% |  | 85.62d |  |  |  | Nicolas; Christie | 16h |  |
| 6 | 2.1.3 | Étude d'opportunité et de faisabilité |  | 1d? | 2013-03-07 | 2013-03-08 |  | 100% |  | 85.62d |  |  |  | Nicolas; Alban | 16h |  |
| 7 | 2.1.4 | Planning du projet |  | 1d? | 2013-03-07 | 2013-03-08 |  | 100% |  | 85.62d |  |  |  | Alban; Brice; Nicolas | 24h |  |
| 8 | 2.2 | Prise de rendez-vous pour validation des docs |  | 1d | 2013-04-04 | 2013-04-05 | 3SF | 100% |  | 65d | 5.62d | finish no earlier than 2013-04-05 |  | Alban; Brice; Christie; Nicolas; Eric.LALITTE | 40h |  |
| 9 | 2.3 | Réunion de validation |  | 1.25d | 2013-04-11 | 2013-04-12 | 8SF |  |  | 48.06d | 2d | start no earlier than 2013-04-11 |  | Alban; Christie; Nicolas; Eric.LALITTE | 40h |  |
| 10 | 2.4 | Lancement du projet |  | 1d | 2013-04-12 | 2013-04-15 | 9SF | 100% |  | 46.06d | 0d | start no earlier than 2013-04-12 |  | Alban; Brice; Christie; Nicolas; Eric.LALITTE | 40h |  |
| 11 | 3 | **Projet** |  | 48.62d? | 2013-04-15 A | 2013-06-20 | 10 | 79% | 10d? | 11d |  |  |  | Alban; Christie; Nicolas | 3580h | 1426.65h |
| 12 | 3.1 | **Itération 1** |  | 11.62d | 2013-04-15 A | 2013-04-30 |  | 99% | 0.05d |  |  |  |  | Alban; Brice; Christie; Nicolas | 845h | 476.19h |
| 13 | 3.1.1 | **Pouvoir scanner l'intégralité du réseau** |  | 6d? | 2013-04-15 A | 2013-04-23 A |  | 100% |  |  |  |  |  | Brice; Christie; Nicolas | 88h | 88h |
| 14 | 3.1.1.1 | **Calcul de la plage d'adresse du réseau local** |  | 2d? | 2013-04-15 A | 2013-04-17 A |  | 100% |  |  |  |  |  | Christie | 24h | 24h |
| 15 | 3.1.1.1.1 | Détermination de l'adresse du réseau |  | 1d? | 2013-04-15 A | 2013-04-16 A |  | 100% |  |  |  |  |  | Christie | 8h | 8h |
| 16 | 3.1.1.1.2 | Détermination de l'adresse de broadcast |  | 1d? | 2013-04-16 A | 2013-04-17 A | 15 | 100% |  |  |  |  |  | Christie | 8h | 8h |
| 17 | 3.1.1.2 | **Envoi de nombreux paquets ARP et ICMP à toutes les adresses IP** |  | 3d? | 2013-04-18 A | 2013-04-23 A | 14FS+1d | 100% |  |  |  |  |  | Brice; Nicolas | 40h | 40h |
| 18 | 3.1.1.2.1 | Obtenir la liste des adresses IP à scanner |  | 1d? | 2013-04-18 A | 2013-04-19 A |  | 100% |  |  |  |  |  | Brice | 8h | 8h |
| 19 | 3.1.1.2.2 | Envoi d'un paquet ICMP (ping) à l'ordinateur à scanner |  | 1d? | 2013-04-19 A | 2013-04-22 A | 18 | 100% |  |  |  |  |  | Nicolas | 8h | 8h |
| 20 | 3.1.1.2.3 | Envoi d'un paquet ARP à l'ordinateur scanné |  | 1d? | 2013-04-22 A | 2013-04-23 A | 19 | 100% |  |  |  |  |  | Nicolas | 8h | 8h |
| 21 | 3.1.2 | **Pouvoir modifier la table ARP à distance** |  | 2d | 2013-04-23 A | 2013-04-25 A | 13 | 100% |  |  |  |  |  | Brice; Nicolas | 40h | 40h |
| 22 | 3.1.2.1 | Envoi de paquet de réponse ARP indiquant que l'adresse du routeur dispose de l'adresse MAC de l'ordinateur interceptant les paquets |  | 1d | 2013-04-23 A | 2013-04-24 A |  | 100% |  |  |  | finish no earlier than 2013-04-22 |  | Nicolas | 8h | 8h |
| 23 | 3.1.2.2 | Vérifier la réception de paquets provenant de l'ordinateur victime |  | 1d | 2013-04-24 A | 2013-04-25 A | 22 | 100% |  |  |  | finish no earlier than 2013-04-22 |  | Alban; Brice | 16h | 16h |
| 24 | 3.1.3 | **Recevoir les réponses en écoutant les paquets et découvrir les adresses MAC du réseau** |  | 2d? | 2013-04-24 A | 2013-04-26 A | 17FS+1d | 100% |  |  |  |  |  | Alban; Nicolas | 32h | 32h |
| 25 | 3.1.3.1 | Écouter à l'aide de LibPcap |  | 1d? | 2013-04-24 A | 2013-04-25 A |  | 100% |  |  |  |  |  | Nicolas | 8h | 8h |
| 26 | 3.1.3.2 | Obtenir l'adresse MAC à partir des paquets ICMP ou ARP précédemment envoyés |  | 1d? | 2013-04-25 A | 2013-04-26 A | 25 | 100% |  |  |  |  |  | Alban | 8h | 8h |

| ID | WBS | Task | Type | Duration | Start | Finish | Predecessors | Complete | Remaining | Actual finish | Total slack | Constraint | Deadline | Resources | Work | Actual work |
| --- | --- | --- | --- | --- | --- | --- | --- | --- | --- | --- | --- | --- | --- | --- | --- | --- |
| 27 | 3.1.4 | **Pouvoir intercepter et rerouter les paquets** |  | 1d | 2013-04-26 A | 2013-04-29 A | 21 | 100% |  |  |  |  |  | Alban; Brice; Christie; Nicolas | 96h | 96h |
| 28 | 3.1.4.1 | **Pouvoir lire et interpréter les paquets à l'aide de la librairie libpcap** |  | 1d | 2013-04-26 A | 2013-04-29 A |  | 100% |  |  |  |  |  | Alban; Brice; Christie; Nicolas | 64h | 64h |
| 29 | 3.1.4.1.1 | Modifier ou retransmettre les paquets à l'aide du FORWARDING |  | 1d | 2013-04-26 A | 2013-04-29 A |  | 100% |  |  |  | finish no earlier than 2013-04-29 |  | Alban; Brice; Christie; Nicolas | 32h | 32h |
| 30 | 3.1.5 | **Fonctionnalités de défense** |  | 5d | 2013-04-23 A | 2013-04-30 |  | 100% |  | 2013-05-01 |  |  |  | Christie | 80h | 80h |
| 31 | 3.1.5.1 | **Détection des modifications de la table ARP** |  | 4d? | 2013-04-23 A | 2013-04-29 A |  | 100% |  |  |  |  | 2013-04-30 | Christie | 32h | 32h |
| 32 | 3.1.5.1.1 | Déterminer l'adresse MAC du routeur |  | 1d? | 2013-04-23 A | 2013-04-24 A |  | 100% |  |  |  | finish no earlier than 2013-04-24 |  | Christie | 8h | 8h |
| 33 | 3.1.5.1.2 | Lire la table ARP toutes les secondes et détecter les modifications |  | 1d? | 2013-04-26 A | 2013-04-29 A |  | 100% |  |  |  | finish no earlier than 2013-04-29 |  | Christie | 8h | 8h |
| 34 | 3.1.5.1.3 | Avertir l'utilisateur d'une éventuelle anomalie |  | 1d? | 2013-04-26 A | 2013-04-29 A |  | 100% |  |  |  | finish no earlier than 2013-04-29 |  | Christie | 8h | 8h |
| 35 | 3.1.5.2 | **Changement de l'adresse MAC** |  | 1d? | 2013-04-30 A | 2013-05-01 A |  | 100% |  |  |  |  |  | Christie | 16h | 16h |
| 36 | 3.1.5.2.1 | Générer une adresse MAC aléatoire et l'appliquer à l'adaptateur réseau |  | 1d? | 2013-04-30 A | 2013-05-01 A |  | 100% |  |  |  | start no earlier than 2013-04-30 |  | Christie | 8h | 8h |
| 37 | 3.1.6 | **Création d'une interface graphique** |  | 6.62d | 2013-04-22 A | 2013-04-30 |  | 99% | 0.08d |  |  |  |  | Brice; Nicolas | 137h | 110.48h |
| 38 | 3.1.6.1 | Lier le programme initial à l'interface graphique | manual | 1.62d | 2013-04-29 A | 2013-04-30 |  | 95% | 0.08d |  |  |  |  | Nicolas | 13h | 12.35h |
| 39 | 3.1.6.2 | Utilisation de la libraire Curses pour créer l'interface en PERL | manual | 2.62d | 2013-04-25 A | 2013-04-29 A |  | 100% |  |  |  |  |  | Nicolas | 21h | 21h |
| 40 | 3.1.6.3 | Mise en place de threads nécessaires à l'envoi et à la réception simultanés de paquets | manual | 2.62d | 2013-04-22 A | 2013-04-24 A |  | 100% |  |  |  |  |  | Brice | 21h | 21h |
| 41 | 3.2 | **Itération 2** |  | 33.62d | 2013-04-30 A | 2013-06-14 |  | 86% | 4.69d |  | 15d |  |  | Alban; Brice; Christie; Nicolas | 890h | 493.86h |
| 42 | 3.2.1 | **Pouvoir obtenir les mots de passe transitant en clair** |  | 25d | 2013-05-06 A | 2013-06-10 |  | 61% | 9.75d |  |  |  |  | Alban; Brice; Christie | 461h | 69.33h |
| 43 | 3.2.1.1 | Intégration d'un cracker |  | 3.62d? | 2013-06-05 A | 2013-06-10 |  | 40% | 2.17d? |  | 19d | finish no earlier than 2013-06-10 |  | Christie | 29h | 11.6h |
| 44 | 3.2.1.1 | Étudier les différents protocoles et leurs systèmes d'authentification |  | 1.35d | 2013-05-06 A | 2013-05-08 A |  | 100% |  |  |  |  |  | Alban; Christie; Brice | 16h | 16h |
| 45 | 3.2.1.2 | Réussir à extraire les identifiants en fonction du protocole utilisé |  | 0.81d | 2013-05-07 A | 2013-05-08 | 44 | 90% | 0.08d |  | 23.19d |  |  | Alban; Christie; Brice | 8h | 6.11h |
| 46 | 3.2.2 | **Pouvoir modifier les réponses DNS** |  | 1d | 2013-05-14 A | 2013-05-15 A | 42 | 100% |  |  |  |  |  | Nicolas; Alban | 32h | 32h |
| 47 | 3.2.2.1.1 | Être capable d'interpréter les paquets DNS, les modifier, puis enfin les retransmettre |  | 1d | 2013-05-14 A | 2013-05-15 A |  | 100% |  |  |  | finish no earlier than 2013-05-15 |  | Nicolas; Alban | 16h | 16h |
| 48 | 3.2.2.1 | **Pouvoir intercepter et répondre à une requête DHCP** |  | 5.62d | 2013-04-30 A | 2013-05-07 A | 27 | 100% |  |  |  |  |  | Nicolas | 87h | 87h |
| 49 | 3.2.2.1.2 | Intercepter les paquets DHCP Discover en broadcast |  | 3.62d? | 2013-04-30 A | 2013-05-03 A |  | 100% |  |  |  | start no earlier than 2013-04-30 |  | Nicolas | 29h | 29h |
| 50 | 3.2.3.2 | Répondre au demandeur d'un bail DHCP |  | 1.62d? | 2013-05-06 A | 2013-05-07 A |  | 100% |  |  |  | start no earlier than 2013-05-06 |  | Nicolas | 13h | 13h |

| ID | WBS | Task | Type | Duration | Start | Finish | Predecessors | Complete | Remaining | Total slack | Free slack | Constraint | Resources | Work | Actual work |
| --- | --- | --- | --- | --- | --- | --- | --- | --- | --- | --- | --- | --- | --- | --- | --- |
| 51 | 3.2.2.2 | **Pouvoir intégrer les cookies de la victime automatiquement sur la machine attaquante** |  | 30.62d | 2013-05-03 A | 2013-06-14 A |  | 100% |  |  |  |  | Brice | 278h | 278h |
| 52 | 3.2.4.1 | Récupération des cookies de la victime | manual | 0.62d | 2013-06-04 A | 2013-06-04 A |  | 100% |  |  |  |  | Christie | 5h | 5h |
| 53 | 3.2.2.2.1 | Étudier les solutions stables et acceptables afin d'intégrer les cookies sur un navigateur |  | 2.5d | 2013-05-10 A | 2013-05-14 A |  | 100% |  |  |  | finish no earlier than 2013-05-14 | Brice | 20h | 20h |
| 54 | 3.2.2.2.2 | Implanter la solution |  | 1d | 2013-05-14 A | 2013-05-15 A | 53 | 100% |  |  |  |  | Nicolas | 8h | 8h |
| 55 | 3.2.2.3 | **Itération 3** |  | 21.62d? | 2013-05-22 A | 2013-06-20 |  | 41% | 12.82d? | 11d |  |  | Alban; Brice; Christie; Nicolas | 1821h | 437.54h |
| 56 | 3.2.2.3.1 | **Affichage des pages web visitées** |  | 18.62d | 2013-05-22 A | 2013-06-17 | 51 | 77% | 4.34d | 14d |  |  | Alban; Brice; Christie; Nicolas | 633h | 75.85h |
| 57 | 3.2.2.3.1.1 | Intercepter et enregistrer les réponses HTTP et HTTPS |  | 2.62d | 2013-05-22 A | 2013-05-24 |  | 97% | 0.08d | 30d |  | finish no earlier than 2013-05-24 | Alban | 21h | 20.37h |
| 58 | 3.2.2.3.1.2 | Convertir la page web au format image |  | 1d | 2013-05-28 A | 2013-05-29 A | 57 | 100% |  |  |  | start no earlier than 2013-05-28 | Nicolas | 8h | 8h |
| 59 | 3.2.2.3.1.3 | Ouvrir les images finales |  | 1d | 2013-06-14 | 2013-06-17 | 58 |  |  | 14d |  | finish no earlier than 2013-05-30 | Alban | 8h |  |
| 60 | 3.2.2.3.2 | **Pouvoir intercepter les transmissions VoIP** |  | 2d? | 2013-05-30 A | 2013-06-03 A | 56 | 100% |  |  |  |  | Nicolas | 80h | 80h |
| 61 | 3.2.2.3.2.1 | **Être capable de détecter lorsqu'un appel VoIP débute** |  | 1d? | 2013-05-30 A | 2013-05-31 A | 58 | 100% |  |  |  |  | Alban; Christie | 32h | 32h |
| 62 | 3.2.2.3.2.1.1 | Utilisation du module RTP / SIP |  | 1d? | 2013-05-30 A | 2013-05-31 A |  | 100% |  |  |  |  | Alban; Christie | 16h | 16h |
| 63 | 3.2.2.3.2.2 | **Enregistrer les conversations vocales dans un format audio** |  | 1d? | 2013-05-31 A | 2013-06-03 A | 61 | 100% |  |  |  |  | Brice; Nicolas | 32h | 32h |
| 64 | 3.2.2.3.2.2.1 | Conversion du flux réseau en flux audio à l'aide de librairies PERL |  | 1d? | 2013-05-31 A | 2013-06-03 A |  | 100% |  |  |  |  | Brice; Nicolas | 16h | 16h |
| 65 | 3.2.2.3.3 | **Pouvoir générer de faux certificats automatiquement** |  | 3d? | 2013-06-12 | 2013-06-17 | 63 |  |  | 11d |  |  | Alban; Brice; Christie; Nicolas | 144h |  |
| 66 | 3.2.2.3.3.1 | Détecter les transactions HTTPS |  | 1d | 2013-06-12 | 2013-06-13 |  |  |  | 11d | 0d | finish no earlier than 2013-06-13 | Brice | 8h |  |
| 67 | 3.2.2.3.3.2 | Générer le faux certificat et l'envoyer à la victime |  | 1d | 2013-06-13 | 2013-06-14 | 66 |  |  | 11d | 0d | finish no earlier than 2013-06-13 | Alban; Brice; Christie; Nicolas | 32h |  |
| 68 | 3.2.2.3.3.3 | Écouter les paquets à l'aide du port 443 |  | 1d? | 2013-06-14 | 2013-06-17 | 67 |  |  | 14d |  |  | Nicolas | 8h |  |
| 69 | 3.2.2.4 | **Recette finale** |  | 2d | 2013-06-14 | 2013-06-18 | 67 |  |  | 11d | 0d |  | Alban; Brice; Christie; Nicolas | 144h |  |
| 70 | 3.2.2.4.1 | Réunion recette |  | 1d | 2013-06-14 | 2013-06-17 |  |  |  | 11d | 0d | start no earlier than 2013-06-14 | Alban; Brice; Christie; Nicolas; Eric.LALITTE | 40h |  |
| 71 | 3.2.2.4.2 | Retour sur le projet |  | 1d | 2013-06-17 | 2013-06-18 | 70 |  |  | 11d |  | finish no earlier than 2013-06-17 | Alban; Brice; Christie; Nicolas; Eric.LALITTE | 40h |  |
| 72 | 3.2.2.5 | **Préparation forum PI** |  | 2d | 2013-06-18 | 2013-06-20 | 69 |  |  | 11d |  |  | Alban; Brice; Christie; Nicolas | 128h |  |
| 73 | 3.2.2.5.1 | Préparation des slides |  | 1d | 2013-06-18 | 2013-06-19 |  |  |  | 11d | 0d | start no earlier than 2013-06-17 | Alban; Brice; Christie; Nicolas | 32h |  |
| 74 | 3.2.2.5.2 | Préparation des élements de décor |  | 1d | 2013-06-19 | 2013-06-20 | 73 |  |  | 11d |  | start no earlier than 2013-06-18 | Alban; Brice; Christie; Nicolas | 32h |  |
